# AssureTech Verification System

Schedule from MS Project, 2023-11-27 to 2024-03-01, costs in $.
David Eccles School of Business

## Calendars

- Standard: Mon-Fri 08:00-12:00, 13:00-17:00; Sat-Sun off.

## Resources

| Resource | Unit | Rate |
| --- | --- | --- |
| Shasha(Software Developer) |  | 75 |
| Willian Chang(UI/UX Design) |  | 63 |
| Uchechi(Quality Assurance) | LS | 53 |
| Ethan(Finance) | Ea | 88 |
| Leo(Legal&Compliance) |  | 70 |

## Schedule

| ID | WBS | Task | Duration | Start | Finish | Predecessors | Baseline start | Baseline finish | Baseline duration | Baseline 1 start | Baseline 1 finish | Total slack | Resources | Work | Cost | Baseline cost |
| --- | --- | --- | --- | --- | --- | --- | --- | --- | --- | --- | --- | --- | --- | --- | --- | --- |
| 1 | 1 | Project Start | 1d? | 2023-11-27 | 2023-11-27 |  | 2023-11-27 | 2023-11-27 | 1d? | 2023-11-27 | 2023-11-27 | 0d |  |  |  |  |
| 2 | 2 | **Requirements and Doumentation signoff** | 11d? | 2023-11-28 | 2023-12-12 |  | 2023-11-28 | 2023-12-12 | 11d? | 2023-11-28 | 2023-12-12 | 0d |  | 104h | 8,144 | 5,472 |
| 3 | 2.1 | **Plan Management** | 9d? | 2023-11-28 | 2023-12-08 |  | 2023-11-28 | 2023-12-12 | 11d? | 2023-11-28 | 2023-12-08 | 0d |  | 80h | 6,176 | 5,472 |
| 4 | 2.1.1 | Project management plan | 1d? | 2023-11-28 | 2023-11-28 | 1 | 2023-11-28 | 2023-11-28 | 1d? | 2023-11-28 | 2023-11-28 | 0d | Leo(Legal&Compliance); Ethan(Finance) [1 Ea] | 16h | 1,264 | 912 |
| 5 | 2.1.2 | Change management plan | 1d? | 2023-11-29 | 2023-11-29 | 4 | 2023-11-29 | 2023-11-29 | 1d? | 2023-11-29 | 2023-11-29 | 0d | Leo(Legal&Compliance); Ethan(Finance) [1 Ea] | 16h | 1,264 | 912 |
| 6 | 2.1.3 | Scope management plan | 1d? | 2023-11-30 | 2023-11-30 | 5 | 2023-11-30 | 2023-11-30 | 1d? | 2023-11-30 | 2023-11-30 | 0d | Leo(Legal&Compliance) | 8h | 560 | 360 |
| 7 | 2.1.4 | Requirements management plan | 1d? | 2023-12-01 | 2023-12-01 | 6 | 2023-12-01 | 2023-12-01 | 1d? | 2023-12-01 | 2023-12-01 | 0d | Leo(Legal&Compliance); Ethan(Finance) [1 Ea] | 16h | 1,264 | 912 |
| 8 | 2.1.5 | Schedule management plan | 1d? | 2023-12-04 | 2023-12-04 | 7 | 2023-12-04 | 2023-12-04 | 1d? | 2023-12-04 | 2023-12-04 | 0d | Leo(Legal&Compliance) | 8h | 560 | 360 |
| 9 | 2.1.6 | Cost management plan | 1d? | 2023-12-05 | 2023-12-05 | 8 | 2023-12-05 | 2023-12-05 | 1d? | 2023-12-05 | 2023-12-05 | 0d | Ethan(Finance) [1 Ea] | 8h | 704 | 552 |
| 10 | 2.1.7 | Quality management plan | 1d? | 2023-12-06 | 2023-12-06 | 9 | 2023-12-06 | 2023-12-06 | 1d? | 2023-12-06 | 2023-12-06 | 0d |  |  |  |  |
| 11 | 2.1.8 | Communications management plan | 1d? | 2023-12-07 | 2023-12-07 | 10 | 2023-12-07 | 2023-12-07 | 1d? | 2023-12-07 | 2023-12-07 | 0d |  |  |  |  |
| 12 | 2.1.9 | Risk management plan | 1d? | 2023-12-08 | 2023-12-08 | 11 | 2023-12-08 | 2023-12-08 | 1d? | 2023-12-08 | 2023-12-08 | 0d | Leo(Legal&Compliance) | 8h | 560 | 360 |
| 13 | 2.2 | **Stakeholders** | 2d? | 2023-12-11 | 2023-12-12 |  | 2023-12-11 | 2023-12-12 | 2d? | 2023-12-11 | 2023-12-12 | 0d |  | 24h | 1,968 | 1,104 |
| 14 | 2.2.1 | Send plans to stakeholders | 1d? | 2023-12-11 | 2023-12-11 | 12 | 2023-12-11 | 2023-12-11 | 1d? | 2023-12-11 | 2023-12-11 | 0d | Ethan(Finance) [1 Ea] | 8h | 704 | 552 |
| 15 | 2.2.2 | Follow up for stakeholder sign off as needed | 1d? | 2023-12-12 | 2023-12-12 | 14 | 2023-12-12 | 2023-12-12 | 1d? | 2023-12-12 | 2023-12-12 | 0d | Ethan(Finance) [1 Ea]; Leo(Legal&Compliance) | 16h | 1,264 | 552 |
| 16 | 3 | **Designing Views & UML** | 7d? | 2023-12-13 | 2023-12-21 |  | 2023-12-13 | 2023-12-21 | 7d? | 2023-12-13 | 2023-12-21 | 0d |  | 48h | 3,024 | 2,256 |
| 17 | 3.1 | **Visualize software design and graphical interface** | 3d? | 2023-12-13 | 2023-12-15 |  | 2023-12-13 | 2023-12-15 | 3d? | 2023-12-13 | 2023-12-15 | 0d |  | 24h | 1,512 | 1,128 |
| 18 | 3.1.1 | Identify user roles and storyboard | 1d | 2023-12-13 | 2023-12-13 | 15 | 2023-12-13 | 2023-12-13 | 1d | 2023-12-13 | 2023-12-13 | 0d | Willian Chang(UI/UX Design) | 8h | 504 | 376 |
| 19 | 3.1.2 | Develop use case analysis and wireframes | 1d? | 2023-12-14 | 2023-12-14 | 18 | 2023-12-14 | 2023-12-14 | 1d? | 2023-12-14 | 2023-12-14 | 0d | Willian Chang(UI/UX Design) | 8h | 504 | 376 |
| 20 | 3.1.3 | UI Mockups and design guidelines | 1d? | 2023-12-15 | 2023-12-15 | 19 | 2023-12-15 | 2023-12-15 | 1d? | 2023-12-15 | 2023-12-15 | 0d | Willian Chang(UI/UX Design) | 8h | 504 | 376 |
| 21 | 3.2 | **User Flow Diagram** | 4d? | 2023-12-18 | 2023-12-21 |  | 2023-12-18 | 2023-12-21 | 4d? | 2023-12-18 | 2023-12-21 | 0d |  | 24h | 1,512 | 1,128 |
| 22 | 3.2.1 | Create UML and ERD | 1d? | 2023-12-18 | 2023-12-18 | 20 | 2023-12-18 | 2023-12-18 | 1d? | 2023-12-18 | 2023-12-18 | 0d | Willian Chang(UI/UX Design) | 8h | 504 | 376 |
| 23 | 3.2.2 | Develop activity diagrams and transitions | 1d? | 2023-12-19 | 2023-12-19 | 22 | 2023-12-19 | 2023-12-19 | 1d? | 2023-12-19 | 2023-12-19 | 0d |  |  |  |  |
| 24 | 3.2.3 | Verify UML validity | 1d? | 2023-12-20 | 2023-12-20 | 23 | 2023-12-20 | 2023-12-20 | 1d? | 2023-12-20 | 2023-12-20 | 0d | Willian Chang(UI/UX Design) | 8h | 504 | 376 |
| 25 | 3.2.4 | Iterate design and feedback from stakeholders | 1d? | 2023-12-21 | 2023-12-21 | 24 | 2023-12-21 | 2023-12-21 | 1d? | 2023-12-21 | 2023-12-21 | 0d | Willian Chang(UI/UX Design) | 8h | 504 | 376 |

| ID | WBS | Task | Duration | Start | Finish | Predecessors | Baseline start | Baseline finish | Baseline duration | Baseline 1 start | Baseline 1 finish | Total slack | Resources | Work | Cost | Baseline cost |
| --- | --- | --- | --- | --- | --- | --- | --- | --- | --- | --- | --- | --- | --- | --- | --- | --- |
| 26 | 4 | **CODING & IMPLEMENTATION** | 9d? | 2023-12-22 | 2024-01-03 |  | 2023-12-22 | 2024-01-03 | 9d? | 2023-12-22 | 2024-01-03 | 0d |  | 88h | 6,056 | 4,120 |
| 27 | 4.1 | **Setup the core API code base** | 4d? | 2023-12-22 | 2023-12-27 |  | 2023-12-22 | 2024-01-03 | 9d? | 2023-12-22 | 2023-12-27 | 0d |  | 40h | 2,904 | 4,120 |
| 28 | 4.1.1 | Implement API for face liveness check request. | 1d? | 2023-12-22 | 2023-12-22 | 25 | 2023-12-22 | 2023-12-22 | 1d? | 2023-12-22 | 2023-12-22 | 0d | Shasha(Software Developer); Willian Chang(UI/UX Design) | 16h | 1,104 | 736 |
| 29 | 4.1.2 | Implement API for face liveness check response. | 1d? | 2023-12-25 | 2023-12-25 | 28 | 2023-12-25 | 2023-12-25 | 1d? | 2023-12-25 | 2023-12-25 | 0d | Shasha(Software Developer) | 8h | 600 | 360 |
| 30 | 4.1.3 | Implement event store producer and call it from API. | 1d? | 2023-12-26 | 2023-12-26 | 29 | 2023-12-26 | 2023-12-26 | 1d? | 2023-12-26 | 2023-12-26 | 0d | Shasha(Software Developer) | 8h | 600 | 360 |
| 31 | 4.1.4 | API refactoring for login | 1d? | 2023-12-27 | 2023-12-27 | 30 | 2023-12-27 | 2023-12-27 | 1d? | 2023-12-27 | 2023-12-27 | 0d | Shasha(Software Developer) | 8h | 600 | 360 |
| 32 | 4.2 | **API Implemantation** | 2d? | 2023-12-28 | 2023-12-29 |  | 2023-12-28 | 2024-01-03 | 5d? | 2023-12-28 | 2023-12-29 | 0d |  | 16h | 1,024 | 2,304 |
| 33 | 4.2.1 | Impleamntation of face/video enrollment | 1d? | 2023-12-28 | 2023-12-28 | 31 | 2023-12-28 | 2023-12-28 | 1d? | 2023-12-28 | 2023-12-28 | 0d | Shasha(Software Developer); Uchechi(Quality Assurance) [1 LS] | 16h | 1,024 | 784 |
| 34 | 4.2.2 | Develop an API that will receive face and video biometrics and produce to an event store | 1d? | 2023-12-29 | 2023-12-29 | 33 | 2023-12-29 | 2023-12-29 | 1d? | 2023-12-29 | 2023-12-29 | 0d |  |  |  |  |
| 35 | 4.3 | **API set up complition** | 3d? | 2024-01-01 | 2024-01-03 |  | 2024-01-01 | 2024-01-03 | 3d? | 2024-01-01 | 2024-01-03 | 0d |  | 32h | 2,128 | 1,520 |
| 36 | 4.3.1 | Complete liveness detection in biometric processor | 1d? | 2024-01-01 | 2024-01-01 | 34 | 2024-01-01 | 2024-01-01 | 1d? | 2024-01-01 | 2024-01-01 | 0d | Shasha(Software Developer) | 8h | 600 | 360 |
| 37 | 4.3.2 | Complete Production setup and deploy | 1d? | 2024-01-02 | 2024-01-02 | 36 | 2024-01-02 | 2024-01-02 | 1d? | 2024-01-02 | 2024-01-02 | 0d | Shasha(Software Developer); Uchechi(Quality Assurance) [1 LS]; Willian Chang(UI/UX Design) | 24h | 1,528 | 1,160 |
| 38 | 4.3.3 | Change algorithm for verification id generation. | 1d? | 2024-01-03 | 2024-01-03 | 37 | 2024-01-03 | 2024-01-03 | 1d? | 2024-01-03 | 2024-01-03 | 0d |  |  |  |  |
| 39 | 5 | **QA is to test, validate authorize and certify the module** | 10d? | 2024-01-04 | 2024-01-17 |  | 2024-01-04 | 2024-01-17 | 10d? | 2024-01-04 | 2024-01-17 | 0d |  | 144h | 8,848 | 6,792 |
| 40 | 5.1 | **BACKEND INTEGRATION MODULE** | 5d | 2024-01-04 | 2024-01-10 |  | 2024-01-04 | 2024-01-10 | 5d | 2024-01-04 | 2024-01-10 | 0d |  | 48h | 2,720 | 2,120 |
| 41 | 5.1.1 | Test that the software application can communicate with a backend system using any integration APIs published by the backend system. | 1d | 2024-01-04 | 2024-01-04 | 38 | 2024-01-04 | 2024-01-04 | 1d | 2024-01-04 | 2024-01-04 | 0d | Uchechi(Quality Assurance) [1 LS] | 8h | 424 | 424 |
| 42 | 5.1.2 | Test that the software application will be capable of putting the applicant data in the correct XML format as specified in the corresponding XSD before sending to the backend | 1d | 2024-01-05 | 2024-01-05 | 41 | 2024-01-05 | 2024-01-05 | 1d | 2024-01-05 | 2024-01-05 | 0d | Uchechi(Quality Assurance) [1 LS] | 8h | 424 | 424 |
| 43 | 5.1.3 | Test that the software application can send enrolled data to the backend immediately upon completion of data capture | 1d | 2024-01-08 | 2024-01-08 | 42 | 2024-01-08 | 2024-01-08 | 1d | 2024-01-08 | 2024-01-08 | 0d | Uchechi(Quality Assurance) [1 LS] | 8h | 424 | 424 |
| 44 | 5.1.4 | Test that the software application can send enrolled data to the backend asynchronously without requiring direct user intervention to initiate this process | 1d | 2024-01-09 | 2024-01-09 | 43 | 2024-01-09 | 2024-01-09 | 1d | 2024-01-09 | 2024-01-09 | 0d | Uchechi(Quality Assurance) [1 LS]; Shasha(Software Developer) | 16h | 1,024 | 424 |
| 45 | 5.1.5 | Test that the software application will provide information on the status of each enrolment sent to the backend stating if it was sent successfully or not. | 1d | 2024-01-10 | 2024-01-10 | 44 | 2024-01-10 | 2024-01-10 | 1d | 2024-01-10 | 2024-01-10 | 0d | Uchechi(Quality Assurance) [1 LS] | 8h | 424 | 424 |
| 46 | 5.2 | **USER MANAGEMENT MODULE** | 5d? | 2024-01-11 | 2024-01-17 |  | 2024-01-11 | 2024-01-17 | 5d? | 2024-01-11 | 2024-01-17 | 0d |  | 96h | 6,128 | 4,672 |
| 47 | 5.2.1 | Test that the software application shall provide a minimum of 3 roles: | 1d | 2024-01-11 | 2024-01-11 | 45 | 2024-01-11 | 2024-01-11 | 1d | 2024-01-11 | 2024-01-11 | 0d | Shasha(Software Developer); Uchechi(Quality Assurance) [1 LS] | 16h | 1,024 | 784 |
| 48 | 5.2.2 | Test that the Supervisor role shall be capable of performing the following functions: | 1d? | 2024-01-12 | 2024-01-12 | 47 | 2024-01-12 | 2024-01-12 | 1d? | 2024-01-12 | 2024-01-12 | 0d | Shasha(Software Developer); Uchechi(Quality Assurance) [1 LS] | 16h | 1,024 | 784 |
| 49 | 5.2.3 | Test that the Administrator role shall be capable of performing the following functions: | 1d? | 2024-01-15 | 2024-01-15 | 48 | 2024-01-15 | 2024-01-15 | 1d? | 2024-01-15 | 2024-01-15 | 0d | Shasha(Software Developer); Uchechi(Quality Assurance) [1 LS] | 16h | 1,024 | 784 |
| 50 | 5.2.4 | Test that the Operator role shall be capable of performing the following functions: | 1d? | 2024-01-16 | 2024-01-16 | 49 | 2024-01-16 | 2024-01-16 | 1d? | 2024-01-16 | 2024-01-16 | 0d | Shasha(Software Developer); Uchechi(Quality Assurance) [1 LS]; Willian Chang(UI/UX Design) | 24h | 1,528 | 1,160 |
| 51 | 5.2.5 | Test that the software application prompts each newly created user to change their password on the first login. | 1d? | 2024-01-17 | 2024-01-17 | 50 | 2024-01-17 | 2024-01-17 | 1d? | 2024-01-17 | 2024-01-17 | 0d | Shasha(Software Developer); Uchechi(Quality Assurance) [1 LS]; Willian Chang(UI/UX Design) | 24h | 1,528 | 1,160 |

Notes:
- 47: · Supervisor / · Administrator / · Operator
- 48: · Manage application users / · Import XML Files / · Run Reports
- 49: · Manage application users / · Manage system settings
- 50: · Input data to complete an application for all application types / · Load demographic data from the pre-enrolment barcode slip into the software application

| ID | WBS | Task | Duration | Start | Finish | Predecessors | Baseline start | Baseline finish | Baseline duration | Baseline 1 start | Baseline 1 finish | Total slack | Resources | Work | Cost | Baseline cost |
| --- | --- | --- | --- | --- | --- | --- | --- | --- | --- | --- | --- | --- | --- | --- | --- | --- |
| 52 | 6 | **DEPLOYMENT** | 32d? | 2024-01-18 | 2024-03-01 |  | 2024-01-18 | 2024-02-06 | 14d? | 2024-01-18 | 2024-03-01 | 0d |  | 224h | 14,440 | 6,056 |
| 53 | 6.1 | **Define Deplyment Strategy** | 3d? | 2024-01-18 | 2024-01-22 |  | 2024-01-18 | 2024-01-22 | 3d? | 2024-01-18 | 2024-01-22 | 0d |  | 24h | 1,272 | 1,272 |
| 54 | 6.1.1 | Involve stakeholders in plan | 1d? | 2024-01-18 | 2024-01-18 | 51 | 2024-01-18 | 2024-01-18 | 1d? | 2024-01-18 | 2024-01-18 | 0d | Uchechi(Quality Assurance) [1 LS] | 8h | 424 | 424 |
| 55 | 6.1.2 | Assess system requirements | 1d? | 2024-01-19 | 2024-01-19 | 54 | 2024-01-19 | 2024-01-19 | 1d? | 2024-01-19 | 2024-01-19 | 0d | Uchechi(Quality Assurance) [1 LS] | 8h | 424 | 424 |
| 56 | 6.1.3 | Create backup/rollback plan | 1d? | 2024-01-22 | 2024-01-22 | 55 | 2024-01-22 | 2024-01-22 | 1d? | 2024-01-22 | 2024-01-22 | 0d | Uchechi(Quality Assurance) [1 LS] | 8h | 424 | 424 |
| 57 | 6.2 | **Develop Deployment Plan** | 3d | 2024-01-23 | 2024-01-25 |  | 2024-01-23 | 2024-01-25 | 3d | 2024-01-23 | 2024-01-25 | 0d |  | 40h | 2,552 | 1,944 |
| 58 | 6.2.1 | Put together deployment team | 1d | 2024-01-23 | 2024-01-23 | 56 | 2024-01-23 | 2024-01-23 | 1d | 2024-01-23 | 2024-01-23 | 0d | Shasha(Software Developer); Uchechi(Quality Assurance) [1 LS] | 16h | 1,024 | 784 |
| 59 | 6.2.2 | Assign tasks to each member | 1d | 2024-01-24 | 2024-01-24 | 58 | 2024-01-24 | 2024-01-24 | 1d | 2024-01-24 | 2024-01-24 | 0d |  |  |  |  |
| 60 | 6.2.3 | Develop communication Plan | 1d | 2024-01-25 | 2024-01-25 | 59 | 2024-01-25 | 2024-01-25 | 1d | 2024-01-25 | 2024-01-25 | 0d | Shasha(Software Developer); Uchechi(Quality Assurance) [1 LS]; Willian Chang(UI/UX Design) | 24h | 1,528 | 1,160 |
| 61 | 6.3 | **Obtain Deployment Resources** | 2d | 2024-01-26 | 2024-01-29 |  | 2024-01-26 | 2024-01-29 | 2d | 2024-01-26 | 2024-01-29 | 0d |  | 8h | 560 | 360 |
| 62 | 6.3.1 | Procure and clean up environment | 1d | 2024-01-26 | 2024-01-26 | 60 | 2024-01-26 | 2024-01-26 | 1d | 2024-01-26 | 2024-01-26 | 0d |  |  |  |  |
| 63 | 6.3.2 | Acquire necessary licenses | 1d | 2024-01-29 | 2024-01-29 | 62 | 2024-01-29 | 2024-01-29 | 1d | 2024-01-29 | 2024-01-29 | 0d | Leo(Legal&Compliance) | 8h | 560 | 360 |
| 64 | 6.4 | **Pre-Deployment dry run Activities** | 6d? | 2024-01-30 | 2024-02-06 |  | 2024-01-30 | 2024-02-06 | 6d? | 2024-01-30 | 2024-02-06 | 0d |  | 48h | 3,312 | 2,480 |
| 65 | 6.4.1 | Conduct pre deployment testing | 1d? | 2024-01-30 | 2024-01-30 | 63 | 2024-01-30 | 2024-01-30 | 1d? | 2024-01-30 | 2024-01-30 | 0d | Uchechi(Quality Assurance) [1 LS] | 8h | 424 | 424 |
| 66 | 6.4.2 | Conduct performance testing | 1d? | 2024-01-31 | 2024-01-31 | 65 | 2024-01-31 | 2024-01-31 | 1d? | 2024-01-31 | 2024-01-31 | 0d | Uchechi(Quality Assurance) [1 LS] | 8h | 424 | 424 |
| 67 | 6.4.3 | Prepare business user to test | 1d? | 2024-02-01 | 2024-02-01 | 66 | 2024-02-01 | 2024-02-01 | 1d? | 2024-02-01 | 2024-02-01 | 0d | Ethan(Finance) [1 Ea]; Leo(Legal&Compliance); Shasha(Software Developer) | 24h | 1,864 | 1,272 |
| 68 | 6.4.4 | Perform data backup | 1d? | 2024-02-02 | 2024-02-02 | 67 | 2024-02-02 | 2024-02-02 | 1d? | 2024-02-02 | 2024-02-02 | 0d | Shasha(Software Developer) | 8h | 600 | 360 |
| 69 | 6.4.5 | Perform server and environment readiness checks | 1d? | 2024-02-05 | 2024-02-05 | 68 | 2024-02-05 | 2024-02-05 | 1d? | 2024-02-05 | 2024-02-05 | 0d |  |  |  |  |
| 70 | 6.4.6 | Monitor and record dry run observations | 1d? | 2024-02-06 | 2024-02-06 | 69 | 2024-02-06 | 2024-02-06 | 1d? | 2024-02-06 | 2024-02-06 | 0d |  |  |  |  |
| 71 | 6.5 | **Pre Production Deployment** | 7d? | 2024-02-07 | 2024-02-15 |  | 2024-02-07 | 2024-02-15 | 7d? | 2024-02-07 | 2024-02-15 | 0d |  | 24h | 1,624 | 1,144 |
| 72 | 6.5.1 | Conduct pre deployment briefing with team | 1d? | 2024-02-07 | 2024-02-07 | 70 | 2024-02-07 | 2024-02-07 | 1d? | 2024-02-07 | 2024-02-07 | 0d | Shasha(Software Developer); Uchechi(Quality Assurance) [1 LS] | 16h | 1,024 | 784 |
| 73 | 6.5.2 | Assign Deployment Roles | 1d? | 2024-02-08 | 2024-02-08 | 72 | 2024-02-08 | 2024-02-08 | 1d? | 2024-02-08 | 2024-02-08 | 0d |  |  |  |  |
| 74 | 6.5.3 | Execute Deployment Plan | 1d? | 2024-02-09 | 2024-02-09 | 73 | 2024-02-09 | 2024-02-09 | 1d? | 2024-02-09 | 2024-02-09 | 0d | Shasha(Software Developer) | 8h | 600 | 360 |
| 75 | 6.5.4 | Install software components | 1d? | 2024-02-12 | 2024-02-12 | 74 | 2024-02-12 | 2024-02-12 | 1d? | 2024-02-12 | 2024-02-12 | 0d |  |  |  |  |
| 76 | 6.5.5 | Monitor System Performance | 1d? | 2024-02-13 | 2024-02-13 | 75 | 2024-02-13 | 2024-02-13 | 1d? | 2024-02-13 | 2024-02-13 | 0d |  |  |  |  |
| 77 | 6.5.6 | Address and record deployment issues | 1d? | 2024-02-14 | 2024-02-14 | 76 | 2024-02-14 | 2024-02-14 | 1d? | 2024-02-14 | 2024-02-14 | 0d |  |  |  |  |
| 78 | 6.5.7 | Pre Production Deployment | 1d | 2024-02-15 | 2024-02-15 | 77 | 2024-02-15 | 2024-02-15 | 1d | 2024-02-15 | 2024-02-15 | 0d |  |  |  |  |

| ID | WBS | Task | Duration | Start | Finish | Predecessors | Baseline start | Baseline finish | Baseline duration | Baseline 1 start | Baseline 1 finish | Total slack | Resources | Work | Cost | Baseline cost |
| --- | --- | --- | --- | --- | --- | --- | --- | --- | --- | --- | --- | --- | --- | --- | --- | --- |
| 79 | 6.6 | **Production Deployment** | 3d? | 2024-02-16 | 2024-02-20 |  | 2024-02-16 | 2024-02-20 | 3d? | 2024-02-16 | 2024-02-20 | 0d |  | 16h | 1,024 | 784 |
| 80 | 6.6.1 | Conduct deployment briefing with team | 1d | 2024-02-16 | 2024-02-16 | 78 | 2024-02-16 | 2024-02-16 | 1d | 2024-02-16 | 2024-02-16 | 0d |  |  |  |  |
| 81 | 6.6.2 | Assign Deployment Roles | 1d? | 2024-02-19 | 2024-02-19 | 80 | 2024-02-19 | 2024-02-19 | 1d? | 2024-02-19 | 2024-02-19 | 0d | Shasha(Software Developer); Uchechi(Quality Assurance) [1 LS] | 16h | 1,024 | 784 |
| 82 | 6.6.3 | Execute Deployment Plan | 1d? | 2024-02-20 | 2024-02-20 | 81 | 2024-02-20 | 2024-02-20 | 1d? | 2024-02-20 | 2024-02-20 | 0d |  |  |  |  |
| 83 | 6.7 | **Post Deployment Activites** | 8d? | 2024-02-21 | 2024-03-01 |  | 2024-02-21 | 2024-03-01 | 8d? | 2024-02-21 | 2024-03-01 | 0d |  | 64h | 4,096 | 3,088 |
| 84 | 6.7.1 | Conduct post deployment testing | 1d | 2024-02-21 | 2024-02-21 | 82 | 2024-02-21 | 2024-02-21 | 1d | 2024-02-21 | 2024-02-21 | 0d | Uchechi(Quality Assurance) [1 LS] | 8h | 424 | 424 |
| 85 | 6.7.2 | Perform deployment checkouts | 1d? | 2024-02-22 | 2024-02-22 | 84 | 2024-02-22 | 2024-02-22 | 1d? | 2024-02-22 | 2024-02-22 | 0d |  |  |  |  |
| 86 | 6.7.3 | Validate system functionality | 1d? | 2024-02-23 | 2024-02-23 | 85 | 2024-02-23 | 2024-02-23 | 1d? | 2024-02-23 | 2024-02-23 | 0d | Shasha(Software Developer); Uchechi(Quality Assurance) [1 LS]; Willian Chang(UI/UX Design) | 24h | 1,528 | 1,160 |
| 87 | 6.7.4 | Address post deployment issues | 1d? | 2024-02-26 | 2024-02-26 | 86 | 2024-02-26 | 2024-02-26 | 1d? | 2024-02-26 | 2024-02-26 | 0d |  |  |  |  |
| 88 | 6.7.5 | Gather end user feedback | 1d? | 2024-02-27 | 2024-02-27 | 87 | 2024-02-27 | 2024-02-27 | 1d? | 2024-02-27 | 2024-02-27 | 0d |  |  |  |  |
| 89 | 6.7.6 | Document lessons learned | 1d? | 2024-02-28 | 2024-02-28 | 88 | 2024-02-28 | 2024-02-28 | 1d? | 2024-02-28 | 2024-02-28 | 0d | Leo(Legal&Compliance) | 8h | 560 | 360 |
| 90 | 6.7.7 | Handover to support team and provide post deployment support | 1d? | 2024-02-29 | 2024-02-29 | 89 | 2024-02-29 | 2024-02-29 | 1d? | 2024-02-29 | 2024-02-29 | 0d | Shasha(Software Developer) | 8h | 600 | 360 |
| 91 | 6.7.8 | Resolve production issues if any | 1d? | 2024-03-01 | 2024-03-01 | 90 | 2024-03-01 | 2024-03-01 | 1d? | 2024-03-01 | 2024-03-01 | 0d | Leo(Legal&Compliance); Uchechi(Quality Assurance) [1 LS] | 16h | 984 | 784 |
